Phase,Milestone / Item,Description,Start Month,End Month,Duration,Status,Key Deliverables
Phase 0 — Foundation,,"Pre-build: infrastructure, team, compliance groundwork",1,3,3 mo,Planning,
Phase 0 — Foundation,0.1  Team assembly,"Hire founding engineering team: 2 fullstack, 1 backend, 1 mobile, 1 design, 1 DevOps, 1 QA",1,2,2 mo,Planning,Offer letters signed; onboarding complete
Phase 0 — Foundation,0.2  Infrastructure setup,"AWS org, VPC, RDS Aurora, S3, CI/CD pipelines (GitHub Actions + ArgoCD), Terraform IaC baseline",1,2,2 mo,Planning,All environments provisioned; IaC in source control
Phase 0 — Foundation,0.3  Auth & identity foundation,"Auth0 tenant, MFA flows, RBAC model, JWT infrastructure, session management",2,3,2 mo,Planning,Auth service deployed; MFA tested
Phase 0 — Foundation,0.4  Design system,"Figma component library, design tokens, accessibility annotations, WCAG 2.2 AA audit framework",1,2,2 mo,Planning,Design system published; all components annotated
Phase 0 — Foundation,0.5  Security baseline,"WAF, secrets management (AWS Secrets Manager), network segmentation, HIPAA gap assessment, BAA with AWS",1,3,3 mo,Planning,SOC2 Type I gap assessment; AWS BAA signed
Phase 0 — Foundation,0.6  Legal & compliance,"Privacy policy, ToS, HIPAA counsel engaged, BAA templates drafted, TCPA/10DLC SMS registration",1,2,2 mo,Planning,Legal docs approved; 10DLC brand registration submitted
Phase 0 — Foundation,0.7  Data architecture,"PostgreSQL schema v1, encryption key management (KMS), audit log schema, FHIR data partition design",2,3,2 mo,Planning,Schema migrated; encryption validated; audit log live
Phase 1 — MVP,,"Core caregiver platform: document vault, health hub, AI assistant, stage navigator",3,9,7 mo,Not started,
Phase 1 — MVP,Sprint 1–2 (Wk 1–4): Vault foundation,"Document upload, S3 storage with SSE-KMS, auto-categorization ML model, metadata schema, profile creation",3,4,2 mo,Not started,File upload with progress; auto-cat >80% accuracy; profile CRUD
Phase 1 — MVP,Sprint 3–4 (Wk 5–8): Vault features,"Smart tagging UI, document checklist, expiration alerts, multi-person profiles, basic permissions model",4,5,2 mo,Not started,Checklist live; expiry email alerts; 2-person vault sharing
Phase 1 — MVP,Sprint 5–6 (Wk 9–12): Health Hub core,"Health profile builder, medication tracker, provider directory, appointment log, screening schedule engine",5,6,2 mo,Not started,Medication tracker with reminders; provider list; screening calendar
Phase 1 — MVP,Sprint 7–8 (Wk 13–16): AI assistant v1,"Claude API integration, document Q&A, health profile Q&A, PII stripping pipeline, streaming response UI",6,7,2 mo,Not started,AI answers document questions; PII never in LLM logs; <4s P95
Phase 1 — MVP,Sprint 9–10 (Wk 17–20): Stage Navigator,"5-stage care model content, warning signs library, milestone conversation guides, normal vs. concern guide",7,8,2 mo,Not started,All 5 stages with content; 12 conversation guides published
Phase 1 — MVP,Sprint 11 (Wk 21–22): Emergency share,"One-tap emergency packet (PDF generation), time-limited share links, offline cache for mobile",8,8,1 mo,Not started,Emergency packet generated in <5s; share link with 48hr TTL
Phase 1 — MVP,Sprint 12 (Wk 23–24): MVP polish & hardening,"Performance optimization, a11y audit pass, cross-browser testing, load testing, bug bash, security scan",8,9,2 mo,Not started,LCP<2.5s; Lighthouse a11y >95; 0 P0/P1 bugs; pen test passed
Phase 1 — MVP,Alpha testing (internal),Dog-fooding with team + advisors; structured feedback sessions; issue triage,8,9,1 mo,Not started,Alpha test report; P0 bug list resolved
Phase 1 — MVP,Beta testing (50 families),Closed beta with 50 recruited caregiver families; NPS measurement; accessibility user testing,9,9,1 mo,Not started,NPS baseline; beta feedback synthesized; go/no-go decision
Phase 1 — MVP,MVP LAUNCH,Public launch — web app + iOS + Android,9,9,—,Not started,Press release; Product Hunt launch; 1000 user target Month 1
Phase 2 — Growth,,"Care research, financial tools, family workspace, SMS parent interface",10,18,9 mo,Not started,
Phase 2 — Growth,Care Finder v1,"Facility search & directory (Google Places + CMS Care Compare data), care type explainers, facility comparison tool",10,12,3 mo,Not started,Search live in all 50 states; CMS star ratings integrated
Phase 2 — Growth,Care Finder v2,"Facility tour checklist, red flags guide, in-home agency directory, save & shortlist feature, transition guides",12,13,2 mo,Not started,Tour checklist; agency search; shareable shortlist
Phase 2 — Growth,Money & Coverage v1,"Medicare explainer, LTC insurance guide, cost estimator (Genworth data), benefits finder (VA, PACE, LIS)",10,12,3 mo,Not started,Medicare guide; cost estimator by state; VA benefits screener
Phase 2 — Growth,Money & Coverage v2,"Medicaid navigator, caregiver tax guide, insurance portal API v1, open enrollment reminders",13,15,3 mo,Not started,Medicaid state rules; EOB decoder; OEP reminder flow
Phase 2 — Growth,Family Workspace,"Multi-member invitations, shared care log, task delegation, sibling coordination, family messaging",11,13,3 mo,Not started,3+ family members in shared workspace; task assign & complete
Phase 2 — Growth,SMS parent interface v1,"Twilio integration, outbound medication & appointment reminders, STOP/opt-out, keyword response parser, 10DLC approval",11,14,4 mo,Not started,SMS reminders live; 2-way keyword responses; TCPA compliant
Phase 2 — Growth,SMS parent interface v2,"WhatsApp Business API, MMS document delivery, secure document links, check-in messages, family relay",14,16,3 mo,Not started,WhatsApp live; document delivery via MMS; check-in with escalation
Phase 2 — Growth,Voice call layer,"Twilio Voice + Polly TTS, automated medication reminder calls, DTMF responses, voicemail transcription",15,17,3 mo,Not started,Outbound voice calls; keypad confirm; transcription to caregiver
Phase 2 — Growth,Plan for Yourself v1,"Aging plan builder wizard, advance directive builder (state templates), healthcare proxy guide, wishes journal",12,15,4 mo,Not started,AD builder for all 50 states; plan wizard complete; journal
Phase 2 — Growth,Plan for Yourself v2,"Financial POA guide, LTC insurance evaluator, home modification planner, estate checklist",15,17,3 mo,Not started,Full self-planning suite live
Phase 2 — Growth,FHIR integration v1,"Epic + Cerner app registration, SMART on FHIR auth flow, ingestion pipeline, normalization layer, Health Hub surface",13,18,6 mo,Not started,Epic & Cerner connected; medications/conditions/labs auto-imported
Phase 2 — Growth,AI assistant v2,"Personalized guidance (profile-aware), conversation prep assistant, medication explainer, proactive nudges, summary generator",14,17,4 mo,Not started,Profile-aware answers; appointment prep; weekly nudge digest
Phase 2 — Growth,DocuSign integration,"eSign integration for advance directives, POA docs, facility contracts; auto-file to Vault on completion",16,17,2 mo,Not started,Sign & file advance directive in-platform
Phase 2 — Growth,Phase 2 QA sprint,"Full regression testing, load test (10k concurrent), a11y audit, security pen test #2, WCAG audit by 3rd party",17,18,2 mo,Not started,Zero P0/P1; Lighthouse a11y >97; pen test clean; WCAG report
Phase 2 — Growth,Phase 2 milestone,10000 active families; $1M ARR; NPS >65; employer pilot launched (5 companies),18,18,—,Not started,ARR dashboard; employer dashboard live
Phase 3 — Scale,,"Employer channel, Alexa/Google Home, marketplace, mobile v2, FHIR expansion",19,27,9 mo,Not started,
Phase 3 — Scale,Employer benefit channel,"SSO/SAML integration, Teams + Slack bots for nudges, HR admin dashboard, usage reporting, bulk onboarding",19,22,4 mo,Not started,20 employer accounts; HR dashboard; SAML SSO live
Phase 3 — Scale,Alexa skill v1,"Alexa Skills Kit integration, proactive medication reminders via Alexa, family message delivery, check-in responses",19,21,3 mo,Not started,Alexa skill certified; proactive reminders; 2-way check-ins
Phase 3 — Scale,Google Home action,"Google Actions SDK, same feature parity as Alexa skill, Nest Hub display support",21,23,3 mo,Not started,Google action approved; full feature parity with Alexa
Phase 3 — Scale,AI voice conversation,"Deepgram STT + Claude streaming + Polly TTS for 2-way voice AI calls, emergency keyword detection",22,25,4 mo,Not started,Voice AI conversation live; emergency detection accuracy >95%
Phase 3 — Scale,FHIR expansion v2,"Athenahealth, Allscripts, eClinicalWorks, CMS Blue Button 2.0, CommonWell connection",20,24,5 mo,Not started,8+ EHR systems connected; Blue Button live for Medicare users
Phase 3 — Scale,Pharmacy / Surescripts API,"Active prescription pull from pharmacy network, refill auto-alerts, cross-pharmacy reconciliation",22,25,4 mo,Not started,Prescriptions auto-imported from major pharmacy chains
Phase 3 — Scale,Trusted provider marketplace,"Eldercare attorneys, GCMs, senior move managers: vetted directory, booking integration, referral revenue tracking",21,24,4 mo,Not started,500 vetted providers; in-platform booking; revenue reporting
Phase 3 — Scale,Mobile app v2,"Native iOS/Android rebuild (Swift/Kotlin), biometric auth, document scanner, offline vault, widget support",20,25,6 mo,Not started,App Store rating >4.5; offline vault; camera scanner
Phase 3 — Scale,Plaid financial integration,"Read-only bank/investment account view, anomaly detection for elder financial abuse, care cost tracking",23,26,4 mo,Not started,Financial safety alerts; balance view; cost vs. budget tracker
Phase 3 — Scale,Community & peer support,"Moderated caregiver forums, peer matching by care situation, expert Q&A (social workers, eldercare attorneys)",24,26,3 mo,Not started,1000 active forum members; weekly expert Q&A
Phase 3 — Scale,Phase 3 QA & scale testing,"Load test (100k concurrent), chaos engineering, disaster recovery drill, full a11y re-audit, SOC2 Type II observation begins",25,27,3 mo,Not started,99.9% uptime validated; DR RTO <1hr; SOC2 audit started
Phase 3 — Scale,Phase 3 milestone,50000 active families; $5M ARR; 100 employer accounts; profitable unit economics,27,27,—,Not started,
Phase 4 — Expansion,,"International, clinical partnerships, data insights, platform API",28,36,9 mo,Not started,
Phase 4 — Expansion,SOC 2 Type II certification,Complete SOC 2 Type II audit (12-month observation period); publish VPAT 2.4 accessibility conformance report,28,30,3 mo,Not started,SOC 2 Type II report issued; VPAT published
Phase 4 — Expansion,Clinical partnership program,"EHR-embedded care coordination tools, hospital discharge planning integration, ACO/MSSP partnerships",28,32,5 mo,Not started,3 health system partnerships; embedded workflow live
Phase 4 — Expansion,Predictive health insights,"ML models for care transition prediction, hospitalization risk, medication adherence forecasting",29,33,5 mo,Not started,Risk scores for transition prediction (AUC >0.75)
Phase 4 — Expansion,Platform API (developer),"Public API for eldercare app ecosystem, webhooks, sandbox environment, developer documentation",30,33,4 mo,Not started,Public API GA; 10 third-party integrations
Phase 4 — Expansion,International — Canada,"PIPEDA compliance, provincial health record integration, French language support (Quebec)",30,34,5 mo,Not started,Canada launch; French content complete
Phase 4 — Expansion,International — UK,"GDPR/UK GDPR compliance, NHS record integration (GP Connect FHIR), UK care provider directory",32,36,5 mo,Not started,UK launch; NHS integration live
Phase 4 — Expansion,Phase 4 milestone,150000 active families; $20M ARR; SOC2 certified; Series B fundraise,36,36,—,Not started,
